# 0000 Назва ЗЗ вер.2

Schedule from MS Project, 2025-12-26 to 2026-02-20, status date 2026-01-06, A marks actual dates.

## Calendars

- Стандартный: Mon-Fri 09:00-13:00, 14:00-18:00; Sat-Sun off.

## Resources

| Resource |
| --- |
| Інженер ВТК |
| Комірник |
| Гулієва |
| Земцова |
| Довгаль |
| Клименко |
| Погребний |
| Рябовол |
| Сметанкін |
| Целуйко |
| Шуліка |
| Ясенов |
| Монтажник 1 |
| Монтажник 2 |
| Монтажник 3 |
| Монтажник 4 |
| Монтажник 5 |
| Монтажник 6 |
| Монтажник 7 |
| Монтажник 8 |
| Монтажник 9 |

## Schedule

| ID | WBS | Task | Type | Duration | Start | Finish | Predecessors | Complete | Baseline start | Baseline finish | Baseline duration | Baseline 1 start | Baseline 1 finish | Total slack | Constraint | Resources | Work | Actual work |
| --- | --- | --- | --- | --- | --- | --- | --- | --- | --- | --- | --- | --- | --- | --- | --- | --- | --- | --- |
| 1 | 1 | **1269_Юрпак** |  | 41d | 2025-12-26 A | 2026-02-20 A |  | 100% | 2025-12-26 | 2026-01-30 | 25d | 2024-01-09 | 2024-02-14 |  |  |  | 40h | 40h |
| 2 | 1.1 | **1269-1** |  | 41d | 2025-12-26 A | 2026-02-20 A |  | 100% | 2025-12-26 | 2026-01-14 | 13.2d | 2024-01-09 | 2024-02-07 |  |  |  | 16h | 16h |
| 3 | 1.1.1 | КД |  | 2d | 2025-12-26 A | 2026-01-06 A |  | 100% | 2025-12-26 | 2026-01-06 | 2d |  |  |  |  |  |  |  |
| 4 | 1.1.2 | Комплектація |  | 1d | 2026-01-22 A | 2026-01-22 A | 3 | 100% | 2026-01-06 | 2026-01-06 | 0.5d | 2024-01-12 | 2024-01-15 |  | start no earlier than 2026-01-17 | Комірник | 8h | 8h |
| 5 | 1.1.3 | Виробництво |  | 9d | 2026-02-09 A | 2026-02-19 A | 4 | 100% | 2026-01-06 | 2026-01-13 | 5d | 2024-01-16 | 2024-02-05 |  | start no earlier than 2026-01-31 |  |  |  |
| 6 | 1.1.4 | ВТК |  | 1d | 2026-02-20 A | 2026-02-20 A | 5 | 100% | 2026-01-13 | 2026-01-14 | 0.5d | 2024-02-06 | 2024-02-06 |  | start no earlier than 2026-01-14 | Інженер ВТК | 8h | 8h |
| 7 | 1.2 | **1269-2** |  | 28d | 2026-01-06 A | 2026-02-12 A |  | 100% | 2026-01-06 | 2026-01-08 | 2.5d | 2024-01-09 | 2024-02-14 |  |  |  | 8h | 8h |
| 8 | 1.2.1 | КД |  | 5d | 2026-01-06 A | 2026-01-12 A |  | 100% | 2026-01-06 | 2026-01-07 | 2d |  |  |  | start no earlier than 2026-01-05 |  |  |  |
| 9 | 1.2.2 | Комплектація |  | 1d | 2026-01-22 A | 2026-01-22 A | 8 | 100% | 2026-01-08 | 2026-01-08 | 0.5d | 2024-01-15 | 2024-01-15 |  | start no earlier than 2026-01-17 | Комірник | 8h | 8h |
| 10 | 1.2.3 | Виробництво |  | 5d | 2026-01-31 A | 2026-02-06 A | 9 | 100% | 2026-01-06 | 2026-01-07 | 1.25d |  |  |  |  |  |  |  |
| 11 | 1.2.4 | ВТК |  | 1d | 2026-02-12 A | 2026-02-12 A | 10 | 100% | 2026-01-08 | 2026-01-08 | 0.15d |  |  |  |  |  |  |  |
| 12 | 1.3 | **1269-3** |  | 28d | 2026-01-06 A | 2026-02-12 A |  | 100% | 2026-01-06 | 2026-01-08 | 2.5d | 2024-01-09 | 2024-02-14 |  |  |  | 8h | 8h |
| 13 | 1.3.1 | КД |  | 5d | 2026-01-06 A | 2026-01-12 A |  | 100% | 2026-01-06 | 2026-01-07 | 2d |  |  |  | start no earlier than 2026-01-05 |  |  |  |
| 14 | 1.3.2 | Комплектація |  | 1d | 2026-01-22 A | 2026-01-22 A | 13 | 100% | 2026-01-08 | 2026-01-08 | 0.5d | 2024-01-15 | 2024-01-15 |  | start no earlier than 2026-01-17 | Комірник | 8h | 8h |
| 15 | 1.3.3 | Виробництво |  | 5d | 2026-01-31 A | 2026-02-06 A | 14 | 100% | 2026-01-06 | 2026-01-07 | 1.25d |  |  |  |  |  |  |  |
| 16 | 1.3.4 | ВТК |  | 1d | 2026-02-12 A | 2026-02-12 A | 15 | 100% | 2026-01-08 | 2026-01-08 | 0.15d |  |  |  |  |  |  |  |
| 17 | 1.4 | **1269-4** |  | 13d | 2026-01-06 A | 2026-01-22 A |  | 100% | 2026-01-06 | 2026-01-06 | 0.65d | 2024-01-09 | 2024-02-14 |  |  |  | 8h | 8h |
| 18 | 1.4.1 | КД |  | 0.25d | 2026-01-06 A | 2026-01-06 A |  | 100% | 2026-01-06 | 2026-01-06 | 0.25d |  |  |  | start no earlier than 2026-01-05 |  |  |  |
| 19 | 1.4.2 | Комплектація |  | 1d | 2026-01-22 A | 2026-01-22 A | 18 | 100% | 2026-01-06 | 2026-01-06 | 0.15d | 2024-01-15 | 2024-01-15 |  | start no earlier than 2026-01-17 | Комірник | 8h | 8h |
| 20 | 2 | Відвантаження | milestone | 0d | 2026-02-20 | 2026-02-20 | 14, 9, 19, 6 |  | 2026-01-30 | 2026-01-30 | 0d |  |  | 92d | start no earlier than 2026-01-30 |  |  |  |

Notes:
- 2: Найменування: Шафа управління головним приводом та приводами намотування ФМ ВТ6
- 7: Найменування: Комплект обладнання для пульта керування ГП
- 12: Найменування: Комплект обладнання для пульта керування Намоткою
- 17: Найменування: Комплектація
